# timeLineProgettoContatore

How a schedule from MS Project changed from version to version. A marks actual dates.

## Version 1 (saved 2021-02-08)

Note of the change: Create timeLineProgettoContatore.mpp

| ID | WBS | Task | Duration | Start | Finish | Predecessors | Total float |
| --- | --- | --- | --- | --- | --- | --- | --- |
| 1 | 1 | **Progetto lettura contatore** | 26d | 2021-02-08 | 2021-03-15 |  | 0d |
| 2 | 1.1 | **1 Materiali** | 10d | 2021-02-08 | 2021-02-19 |  | 0d |
| 3 |  | 1.1 Ricerca materiali | 3d | 2021-02-08 | 2021-02-10 |  | 0d |
| 4 |  | 1.2 Ordinazione materiali | 7d | 2021-02-11 | 2021-02-19 | 3 | 0d |
| 5 | 1.2 | **2 Realizzazione software** | 15d | 2021-02-23 | 2021-03-15 | 4 | 0d |
| 6 |  | 2.1 Acquisizione immagine | 5d | 2021-02-23 | 2021-03-01 | 15 | 0d |
| 7 |  | 2.2 Elaborazione immagine tramite open CV | 5d | 2021-03-02 | 2021-03-08 | 6 | 0d |
| 8 |  | 2.3 Gestione stand-by del dispositivo | 5d | 2021-02-23 | 2021-03-01 | 15 | 10d |
| 9 |  | 2.4 Invio dati al cloud server | 5d | 2021-03-09 | 2021-03-15 | 6, 7 | 0d |
| 10 | 1.3 | **3 Realizzazione hardware** | 11d | 2021-02-22 | 2021-03-08 |  | 0d |
| 11 | 1.3.1 | **3.1 Progettazione 3d** | 10d | 2021-02-22 | 2021-03-05 | 4 | 5d |
| 12 |  | 3.1.1 Disegno dell'involucro in 3d | 3d | 2021-02-22 | 2021-02-24 |  | 5d |
| 13 |  | 3.1.2 Stampa 3d | 7d | 2021-02-25 | 2021-03-05 | 12 | 5d |
| 14 | 1.3.2 | **3.2 Montaggio hardware** | 11d | 2021-02-22 | 2021-03-08 |  | 0d |
| 15 |  | 3.2.1 Montaggio provvisorio | 1d | 2021-02-22 | 2021-02-22 | 4 | 0d |
| 16 |  | 3.2.2 Montaggio completo con involucro 3d | 1d | 2021-03-08 | 2021-03-08 | 13, 15 | 5d |
| 17 |  | 4 Test finali | 4d | 2021-03-16 | 2021-03-19 | 8, 9, 16 | 0d |
| 18 |  | 5 Consegna | 0d | 2021-03-19 | 2021-03-19 | 17 | 0d |

## Version 2 (saved 2021-02-09)

Note of the change: Merge pull request #5 from EMoscatello/LuppinoVincenzo

Last finish 2021-03-19 → 2021-02-26 (-21d).

Added:

| ID | Task | Duration | Start | Finish | Predecessors | Resources |
| --- | --- | --- | --- | --- | --- | --- |
| 5 | **2 Prototipo 1** | 7d? | 2021-02-08 | 2021-02-16 |  |  |
| 8 | 2.1.1.1 Ricerca | 2d | 2021-02-08 | 2021-02-09 |  | Pignata Marcello |
| 9 | 2.1.1.2 Sviluppo software | 5d | 2021-02-09 | 2021-02-15 | 8 | Pignata Marcello |
| 10 | 2.1.1.3 Test sul raspberry | 2d | 2021-02-23 | 2021-02-24 | 9, 28 | Pignata Marcello |
| 12 | 2.1.2.1 Ricerca | 2d | 2021-02-08 | 2021-02-09 |  | Moscatello Enrico |
| 13 | 2.1.2.2 Sviluppo software | 5d | 2021-02-09 | 2021-02-15 | 12 | Moscatello Enrico |
| 14 | 2.1.2.3 Test sul raspberry | 2d | 2021-02-23 | 2021-02-24 | 13, 28 | Moscatello Enrico |
| 16 | 2.1.3.1 Ricerca | 2d | 2021-02-08 | 2021-02-09 |  | Angeretti Marco |
| 17 | 2.1.3.2 Sviluppo software | 5d | 2021-02-09 | 2021-02-15 | 16 | Angeretti Marco |
| 18 | 2.1.3.3 Test sul raspberry | 2d | 2021-02-23 | 2021-02-24 | 17, 28 | Angeretti Marco |
| 20 | 2.1.4.1 Ricerca | 2d | 2021-02-08 | 2021-02-09 |  | Luppino Vincenzo |
| 21 | 2.1.4.2 Sviluppo software | 5d | 2021-02-09 | 2021-02-15 | 20 | Luppino Vincenzo |
| 22 | 2.1.4.3 Test sul raspberry | 2d | 2021-02-23 | 2021-02-24 | 21, 28 | Luppino Vincenzo |
| 30 | 2.3 Test completo prototipo 1 | 3d | 2021-02-24 | 2021-02-26 | 10, 14, 18, 22, 29 | Moscatello Enrico |
| 31 | **3 Prototipo 2** | 1d? | 2021-02-08 | 2021-02-08 |  |  |
| 32 | **3.1 Realizzazione software** | 1d | 2021-02-08 | 2021-02-08 |  |  |
| 33 | **3.1.1 Riconoscimento numeri/targhe** | 1d | 2021-02-08 | 2021-02-08 |  |  |
| 34 | 3.1.1.1 Ricerca | 1d | 2021-02-08 | 2021-02-08 |  | Pignata Marcello |
| 35 | 3.1.1.2 Sviluppo software | 1d | 2021-02-08 | 2021-02-08 |  | Pignata Marcello |
| 36 | 3.1.1.3 Test sul raspberry | 1d | 2021-02-08 | 2021-02-08 |  | Pignata Marcello |
| 37 | **3.1.2 Riconoscimento lancette micro misurazioni** | 1d | 2021-02-08 | 2021-02-08 |  |  |
| 38 | 3.1.2.1 Ricerca | 1d | 2021-02-08 | 2021-02-08 |  | Moscatello Enrico |
| 39 | 3.1.2.2 Sviluppo software | 1d | 2021-02-08 | 2021-02-08 |  | Moscatello Enrico |
| 40 | 3.1.2.3 Test sul raspberry | 1d | 2021-02-08 | 2021-02-08 |  | Moscatello Enrico |
| 41 | **3.1.3 Gestione stand-by del dispositivo** | 1d | 2021-02-08 | 2021-02-08 |  |  |
| 42 | 3.1.3.1 Ricerca | 1d | 2021-02-08 | 2021-02-08 |  | Angeretti Marco |
| 43 | 3.1.3.2 Sviluppo software | 1d | 2021-02-08 | 2021-02-08 |  | Angeretti Marco |
| 44 | 3.1.3.3 Test sul raspberry | 1d | 2021-02-08 | 2021-02-08 |  | Angeretti Marco |
| 45 | **3.1.4 Invio dati al cloud server** | 1d | 2021-02-08 | 2021-02-08 |  |  |
| 46 | 3.1.4.1 Ricerca | 1d | 2021-02-08 | 2021-02-08 |  | Luppino Vincenzo |
| 47 | 3.1.4.2 Sviluppo software | 1d | 2021-02-08 | 2021-02-08 |  | Luppino Vincenzo |
| 48 | 3.1.4.3 Test sul raspberry | 1d | 2021-02-08 | 2021-02-08 |  | Luppino Vincenzo |
| 49 | **3.2 Realizzazione hardware** | 1d | 2021-02-08 | 2021-02-08 |  |  |
| 50 | **3.2.1 Progettazione 3d** | 1d | 2021-02-08 | 2021-02-08 |  |  |
| 51 | 3.2.1.1 Disegno dell'involucro in 3d | 1d | 2021-02-08 | 2021-02-08 |  | Luppino Vincenzo |
| 52 | 3.2.1.2 Stampa 3d | 1d | 2021-02-08 | 2021-02-08 |  | Luppino Vincenzo |
| 53 | **3.2.2 Montaggio hardware** | 1d | 2021-02-08 | 2021-02-08 |  |  |
| 54 | 3.2.2.1 Montaggio provvisorio | 1d | 2021-02-08 | 2021-02-08 |  | Angeretti Marco |
| 55 | 3.2.2.2 Montaggio completo con involucro 3d | 1d | 2021-02-08 | 2021-02-08 |  | Angeretti Marco |
| 56 | 3.3 Test completo prototipo 2 | 1d? | 2021-02-08 | 2021-02-08 |  |  |

Removed: 17 4 Test finali; 18 5 Consegna

Changed:

| ID | Task | Start | Finish | Duration | Total float | Predecessors | Other |
| --- | --- | --- | --- | --- | --- | --- | --- |
| 1 | **Progetto lettura contatore** |  | 2021-03-15 → 2021-02-16 (-27d) | 26d → 7d? | 0d → none |  |  |
| 2 | **1 Materiali** |  | 2021-02-19 → 2021-02-08 (-11d) | 10d → 0d | 0d → none |  |  |
| 4 | 1.2 Acquisto materiali |  |  |  | 0d → none |  | was named 1.2 Ordinazione materiali |
| 6 | **2.1 Realizzazione software** | 2021-02-23 → 2021-02-08 (-15d) | 2021-03-15 → 2021-02-08 (-35d) | 15d → 0d? | 0d → none | 4 → none | was named 2 Realizzazione software |
| 7 | **2.1.1 Riconoscimento numeri/targhe** | 2021-02-23 → 2021-02-08 (-15d) | 2021-03-01 → 2021-02-08 (-21d) | 5d → 0d? | 0d → none | 28 → none | was named 2.1 Acquisizione immagine; resources Pignata Marcello → none |
| 11 | **2.1.2 Riconoscimento lancette micro misurazioni** | 2021-03-02 → 2021-02-08 (-22d) | 2021-03-08 → 2021-02-08 (-28d) | 5d → 0d? | 0d → none | 7 → none | was named 2.2 Elaborazione immagine tramite open CV; resources Moscatello Enrico → none |
| 15 | **2.1.3 Gestione stand-by del dispositivo** | 2021-02-23 → 2021-02-08 (-15d) | 2021-03-01 → 2021-02-08 (-21d) | 5d → 0d? | 10d → none | 28 → none | was named 2.3 Gestione stand-by del dispositivo; resources Angeretti Marco → none |
| 19 | **2.1.4 Invio dati al cloud server** | 2021-03-09 → 2021-02-08 (-29d) | 2021-03-15 → 2021-02-08 (-35d) | 5d → 0d? | 0d → none | 7, 11 → none | was named 2.4 Invio dati al cloud server; resources Luppino Vincenzo → none |
| 23 | **2.2 Realizzazione hardware** | 2021-02-22 → 2021-02-08 (-14d) | 2021-03-08 → 2021-02-08 (-28d) | 11d → 1d | 0d → none |  | was named 3 Realizzazione hardware |
| 24 | **2.2.1 Progettazione 3d** | 2021-02-22 → 2021-02-08 (-14d) | 2021-03-05 → 2021-02-08 (-25d) | 10d → 1d | 5d → none | 4 → none | was named 3.1 Progettazione 3d |
| 25 | 2.2.1.1 Disegno dell'involucro in 3d | 2021-02-22 → 2021-02-08 (-14d) | 2021-02-24 → 2021-02-11 (-13d) | 3d → 4d | 5d → none |  | was named 3.1.1 Disegno dell'involucro in 3d |
| 26 | 2.2.1.2 Stampa 3d | 2021-02-25 → 2021-02-09 (-16d) | 2021-03-05 → 2021-02-17 (-16d) |  | 5d → none |  | was named 3.1.2 Stampa 3d |
| 27 | **2.2.2 Montaggio hardware** | 2021-02-22 → 2021-02-08 (-14d) | 2021-03-08 → 2021-02-08 (-28d) | 11d → 1d | 0d → none |  | was named 3.2 Montaggio hardware |
| 28 | 2.2.2.1 Montaggio provvisorio |  |  |  | 0d → none |  | was named 3.2.1 Montaggio provvisorio; resources Angeretti Marco; Moscatello Enrico → Angeretti Marco |
| 29 | 2.2.2.2 Montaggio completo con involucro 3d | 2021-03-08 → 2021-02-23 (-13d) | 2021-03-08 → 2021-02-23 (-13d) |  | 5d → none |  | was named 3.2.2 Montaggio completo con involucro 3d; resources Luppino Vincenzo; Pignata Marcello → Angeretti Marco |

## Version 3 (saved 2021-02-12)

Note of the change: Merge pull request #6 from EMoscatello/LuppinoVincenzo

Last finish 2021-02-26 → 2021-03-17 (+19d).

Changed:

| ID | Task | Start | Finish | Duration | Total float | Predecessors | Other |
| --- | --- | --- | --- | --- | --- | --- | --- |
| 1 | **Progetto lettura contatore** |  | 2021-02-16 → 2021-03-17 (+29d) | 7d? → 28d | none → 0d |  |  |
| 2 | **1 Materiali** |  | 2021-02-08 → 2021-02-19 (+11d) | 0d → 10d | none → 0d |  |  |
| 5 | **2 Prototipo 1** |  | 2021-02-16 → 2021-03-01 (+13d) | 7d? → 16d | none → 0d |  |  |
| 6 | **2.1 Realizzazione software** |  | 2021-02-08 → 2021-02-24 (+16d) | 0d? → 13d | none → 0d |  |  |
| 7 | **2.1.1 Riconoscimento numeri/targhe** |  | 2021-02-08 → 2021-02-24 (+16d) | 0d? → 13d | none → 0d |  |  |
| 9 | 2.1.1.2 Sviluppo software | 2021-02-09 → 2021-02-10 (+1d) | 2021-02-15 → 2021-02-16 (+1d) |  | none → 4d |  |  |
| 11 | **2.1.2 Riconoscimento lancette micro misurazioni** |  | 2021-02-08 → 2021-02-24 (+16d) | 0d? → 13d | none → 0d |  |  |
| 13 | 2.1.2.2 Sviluppo software | 2021-02-09 → 2021-02-10 (+1d) | 2021-02-15 → 2021-02-16 (+1d) |  | none → 4d |  |  |
| 15 | **2.1.3 Gestione stand-by del dispositivo** |  | 2021-02-08 → 2021-02-24 (+16d) | 0d? → 13d | none → 0d |  |  |
| 17 | 2.1.3.2 Sviluppo software | 2021-02-09 → 2021-02-10 (+1d) | 2021-02-15 → 2021-02-16 (+1d) |  | none → 4d |  |  |
| 19 | **2.1.4 Invio dati al cloud server** |  | 2021-02-08 → 2021-02-24 (+16d) | 0d? → 13d | none → 0d |  |  |
| 21 | 2.1.4.2 Sviluppo software | 2021-02-09 → 2021-02-10 (+1d) | 2021-02-15 → 2021-02-16 (+1d) |  | none → 4d |  |  |
| 23 | **2.2 Realizzazione hardware** |  | 2021-02-08 → 2021-02-23 (+15d) | 1d → 12d | none → 1d |  |  |
| 24 | **2.2.1 Progettazione 3d** |  | 2021-02-08 → 2021-02-22 (+14d) | 1d → 11d | none → 1d |  |  |
| 26 | 2.2.1.2 Stampa 3d | 2021-02-09 → 2021-02-12 (+3d) | 2021-02-17 → 2021-02-22 (+5d) |  | none → 1d |  |  |
| 27 | **2.2.2 Montaggio hardware** | 2021-02-08 → 2021-02-22 (+14d) | 2021-02-08 → 2021-02-23 (+15d) | 1d → 2d | none → 0d |  |  |
| 30 | 2.3 Test completo prototipo 1 | 2021-02-24 → 2021-02-25 (+1d) | 2021-02-26 → 2021-03-01 (+3d) |  | none → 0d |  |  |
| 31 | **3 Prototipo 2** | 2021-02-08 → 2021-02-25 (+17d) | 2021-02-08 → 2021-03-17 (+37d) | 1d? → 15d | none → 0d |  |  |
| 32 | **3.1 Realizzazione software** | 2021-02-08 → 2021-02-25 (+17d) | 2021-02-08 → 2021-03-09 (+29d) | 1d → 9d | none → 6d |  |  |
| 33 | **3.1.1 Riconoscimento numeri/targhe** | 2021-02-08 → 2021-02-25 (+17d) | 2021-02-08 → 2021-03-09 (+29d) | 1d → 9d | none → 6d |  |  |
| 34 | 3.1.1.1 Ricerca | 2021-02-08 → 2021-02-25 (+17d) | 2021-02-08 → 2021-02-26 (+18d) | 1d → 2d | none → 6d | none → 10, 14, 18, 22, 29 |  |
| 35 | 3.1.1.2 Sviluppo software | 2021-02-08 → 2021-03-01 (+21d) | 2021-02-08 → 2021-03-05 (+25d) | 1d → 5d | none → 6d | none → 34 |  |
| 36 | 3.1.1.3 Test sul raspberry | 2021-02-08 → 2021-03-08 (+28d) | 2021-02-08 → 2021-03-09 (+29d) | 1d → 2d | none → 6d | none → 35, 54 |  |
| 37 | **3.1.2 Riconoscimento lancette micro misurazioni** | 2021-02-08 → 2021-02-25 (+17d) | 2021-02-08 → 2021-03-09 (+29d) | 1d → 9d | none → 6d |  |  |
| 38 | 3.1.2.1 Ricerca | 2021-02-08 → 2021-02-25 (+17d) | 2021-02-08 → 2021-02-26 (+18d) | 1d → 2d | none → 6d | none → 10, 14, 18, 22, 29 |  |
| 39 | 3.1.2.2 Sviluppo software | 2021-02-08 → 2021-03-01 (+21d) | 2021-02-08 → 2021-03-05 (+25d) | 1d → 5d | none → 6d | none → 38 |  |
| 40 | 3.1.2.3 Test sul raspberry | 2021-02-08 → 2021-03-08 (+28d) | 2021-02-08 → 2021-03-09 (+29d) | 1d → 2d | none → 6d | none → 39, 54 |  |
| 41 | **3.1.3 Gestione stand-by del dispositivo** | 2021-02-08 → 2021-02-25 (+17d) | 2021-02-08 → 2021-03-09 (+29d) | 1d → 9d | none → 6d |  |  |
| 42 | 3.1.3.1 Ricerca | 2021-02-08 → 2021-02-25 (+17d) | 2021-02-08 → 2021-02-26 (+18d) | 1d → 2d | none → 6d | none → 10, 14, 18, 22, 29 |  |
| 43 | 3.1.3.2 Sviluppo software | 2021-02-08 → 2021-03-01 (+21d) | 2021-02-08 → 2021-03-05 (+25d) | 1d → 5d | none → 6d | none → 42 |  |
| 44 | 3.1.3.3 Test sul raspberry | 2021-02-08 → 2021-03-08 (+28d) | 2021-02-08 → 2021-03-09 (+29d) | 1d → 2d | none → 6d | none → 43, 54 |  |
| 45 | **3.1.4 Invio dati al cloud server** | 2021-02-08 → 2021-02-25 (+17d) | 2021-02-08 → 2021-03-09 (+29d) | 1d → 9d | none → 6d |  |  |
| 46 | 3.1.4.1 Ricerca | 2021-02-08 → 2021-02-25 (+17d) | 2021-02-08 → 2021-02-26 (+18d) | 1d → 2d | none → 6d | none → 10, 14, 18, 22, 29 |  |
| 47 | 3.1.4.2 Sviluppo software | 2021-02-08 → 2021-03-01 (+21d) | 2021-02-08 → 2021-03-05 (+25d) | 1d → 5d | none → 6d | none → 46 |  |
| 48 | 3.1.4.3 Test sul raspberry | 2021-02-08 → 2021-03-08 (+28d) | 2021-02-08 → 2021-03-09 (+29d) | 1d → 2d | none → 6d | none → 47, 54 |  |
| 49 | **3.2 Realizzazione hardware** | 2021-02-08 → 2021-03-02 (+22d) | 2021-02-08 → 2021-03-17 (+37d) | 1d → 12d | none → 0d |  |  |
| 50 | **3.2.1 Progettazione 3d** | 2021-02-08 → 2021-03-02 (+22d) | 2021-02-08 → 2021-03-16 (+36d) | 1d → 11d | none → 0d |  |  |
| 51 | 3.2.1.1 Disegno dell'involucro in 3d | 2021-02-08 → 2021-03-02 (+22d) | 2021-02-08 → 2021-03-05 (+25d) | 1d → 4d | none → 0d | none → 30 |  |
| 52 | 3.2.1.2 Stampa 3d | 2021-02-08 → 2021-03-08 (+28d) | 2021-02-08 → 2021-03-16 (+36d) | 1d → 7d | none → 0d | none → 51 |  |
| 53 | **3.2.2 Montaggio hardware** | 2021-02-08 → 2021-03-02 (+22d) | 2021-02-08 → 2021-03-17 (+37d) | 1d → 12d | none → 0d |  |  |
| 54 | 3.2.2.1 Montaggio provvisorio | 2021-02-08 → 2021-03-02 (+22d) | 2021-02-08 → 2021-03-02 (+22d) |  | none → 9d | none → 30 |  |
| 55 | 3.2.2.2 Montaggio completo con involucro 3d | 2021-02-08 → 2021-03-17 (+37d) | 2021-02-08 → 2021-03-17 (+37d) |  | none → 0d | none → 52, 54 |  |
| 56 | 3.3 Test completo prototipo 2 | 2021-02-08 → 2021-02-25 (+17d) | 2021-02-08 → 2021-03-01 (+21d) | 1d? → 3d | none → 12d | none → 10, 14, 18, 22, 29 | resources none → Moscatello Enrico |
